# F:\Viet Tuan\VINACONEXEC\DAU THAU\B. CÁC DỰ ÁN KHÁC\85. Long Son Pakage G-Hyundai\Prepairation\Construction Schedule-Package G-Huynhdai

Schedule from MS Project, 2026-05-15 to 2029-02-26.

## Calendars

- Standard: Mon-Sun 08:00-12:00, 13:00-17:00. Exceptions (off unless hours are given): 2027-02-05 to 2027-02-11 08:00-12:00, 13:00-17:00 (Tết âm lịch 2027), 2028-02-13 to 2028-02-17 (Tết âm lịch 2028).

## Resources

| Resource |
| --- |
| 137 cọc |
| 233m chu vi |
| 21 tầng |
| 1 |
| 1 cọc |
| 1 cọc D1 |
| 5; 1 cọc D1 |
| 2 |
| 48 cọc D1 |
| 5; 25 cọc D1 |
| 5 25cọc D1 |
| 169m chu vi |
| 114m chu vi |
| 171m chu vi |
| 124m chu vi |
| 464md |
| 232md |

## Schedule

| ID | WBS | Task | Duration | Start | Finish | Predecessors | Total slack | Free slack | Constraint | Work | Text1 |
| --- | --- | --- | --- | --- | --- | --- | --- | --- | --- | --- | --- |
| 1 | 1 | **TỔNG TIẾN ĐỘ** | 1014d | 2026-05-15 | 2029-02-26 |  | 0d |  |  | 6896h |  |
| 2 | 1.1 | **A. CÔNG TÁC CHUẨN BỊ** | 45d | 2026-05-15 | 2026-06-28 |  | 212d |  |  |  |  |
| 3 | 1.1.1 | Huy động vật tư và thiết bị | 45d | 2026-05-15 | 2026-06-28 |  | 907d | 0d | start no earlier than 2026-05-15 |  |  |
| 4 | 1.1.2 | Văn phòng và tiện ích tạm | 45d | 2026-05-15 | 2026-06-28 | 3SS | 1019d |  |  |  |  |
| 5 | 1.2 | **B. TIẾN ĐỘ 3 TÒA NOXH (CT02-1, 2, 3)** | 797d | 2026-05-15 | 2028-07-24 |  | 132d |  |  | 6616h |  |
| 6 | 1.2.1 | THIẾT LẬP HÀNG RÀO, CỔNG DỰ ÁN | 15d | 2026-05-15 | 2026-05-29 | 3SS | 907d | 0d | start no earlier than 2026-02-28 |  |  |
| 7 | 1.2.2 | **SAN LẤP MẶT BẰNG (tạo mặt bằng T/C)** | 35d | 2026-05-22 | 2026-06-25 |  | 212d |  |  |  |  |
| 8 | 1.2.2.1 | SAN LẤP MẶT BẰNG TÒA CT02-1 | 10d | 2026-05-22 | 2026-05-31 | 6SS+7d | 907d | 0d |  |  |  |
| 9 | 1.2.2.2 | SAN LẤP MẶT BẰNG TÒA CT02-2 | 15d | 2026-06-01 | 2026-06-15 | 8 | 1022d | 0d |  |  |  |
| 10 | 1.2.2.3 | SAN LẤP MẶT BẰNG TÒA CT02-3 | 25d | 2026-06-01 | 2026-06-25 | 9SS | 1022d |  |  |  |  |
| 11 | 1.2.3 | **NHÀ CT2** | 780d | 2026-06-01 | 2028-07-24 |  | 115d |  |  | 6616h |  |
| 12 | 1.2.3.1 | **CT02 THI CÔNG PHẦN NGẦM** | 461d | 2026-06-01 | 2027-09-04 |  | 115d |  |  | 1576h |  |
| 13 | 1.2.3.1.1 | **CT02-1-2-3 Thi công cọc khoan nhồi** | 105d | 2026-06-01 | 2026-09-13 |  | 212d |  |  |  |  |
| 14 | 1.2.3.1.1.1 | Thi công cọc khoan nhồi: CỌC THỬ | 30d | 2026-06-01 | 2026-06-30 | 8 | 237d | 0d |  |  |  |
| 15 | 1.2.3.1.1.2 | CT02-1 Thi công cọc khoan nhồi (đại trà) | 35d | 2026-07-01 | 2026-08-04 | 14 | 237d | 0d |  |  |  |
| 16 | 1.2.3.1.1.3 | CT02-2 Thi công cọc khoan nhồi (đại trà) | 45d | 2026-07-01 | 2026-08-14 | 15SS | 892d |  |  |  |  |
| 17 | 1.2.3.1.1.4 | CT02-3 Thi công cọc khoan nhồi (đại trà) | 40d | 2026-08-05 | 2026-09-13 | 15 | 827d | 0d |  |  |  |
| 18 | 1.2.3.1.2 | **Thi công cừ và sàn B1** | 80d | 2026-08-05 | 2026-10-23 |  | 50d |  |  |  |  |
| 19 | 1.2.3.1.2.1 | Đào hạ cốt, thi công bê tông lót B1 | 20d | 2026-08-05 | 2026-08-24 | 15 | 237d | 0d |  |  |  |
| 20 | 1.2.3.1.2.2 | Ép cừ Zone 1 (CT2.1 + CT2.2) | 25d | 2026-08-15 | 2026-09-08 | 19SS+10d | 867d | 0d | finish no earlier than 2025-03-03 |  | 242m, mỗi ngày làm 12md /2 máy, làm tròn là 25 ngày |
| 21 | 1.2.3.1.2.3 | Thi công sàn B1 - Zone 1 | 30d | 2026-08-15 | 2026-09-13 | 20SS | 202d | 0d |  |  |  |
| 22 | 1.2.3.1.2.4 | Đào hạ cốt, thi công bê tông lót B1 (Zone 2) | 20d | 2026-09-14 | 2026-10-03 | 17 | 827d | 0d |  |  |  |
| 23 | 1.2.3.1.2.5 | Ép cừ Zone 2 | 25d | 2026-09-24 | 2026-10-18 | 22SS+10d | 827d | 0d | finish no earlier than 2025-03-03 |  | 242m, mỗi ngày làm 12md /2 máy, làm tròn là 25 ngày |
| 24 | 1.2.3.1.2.6 | Thi công sàn B1 - Zone 2 | 30d | 2026-09-24 | 2026-10-23 | 23SS | 0d |  |  |  |  |

| ID | WBS | Task | Duration | Start | Finish | Predecessors | Total slack | Free slack | Resources | Work | Text1 |
| --- | --- | --- | --- | --- | --- | --- | --- | --- | --- | --- | --- |
| 25 | 1.2.3.1.3 | **Thi công văng chống + đào đất** | 120d | 2026-09-21 | 2027-01-18 |  | 40d |  |  |  |  |
| 26 | 1.2.3.1.3.1 | Lắp đặt chống lớp trên (Zone 1) | 15d | 2026-09-21 | 2026-10-05 | 21FS+7d | 217d | 0d |  |  |  |
| 27 | 1.2.3.1.3.2 | Đào đất đến lớp chống dưới | 20d | 2026-10-06 | 2026-10-25 | 26 | 217d | 0d |  |  |  |
| 28 | 1.2.3.1.3.3 | Lắp đặt chống lớp dưới (chống chéo) | 25d | 2026-10-06 | 2026-10-30 | 27SS | 217d | 0d |  |  |  |
| 29 | 1.2.3.1.3.4 | Đào đất đến đáy móng (Zone 1) | 45d | 2026-10-26 | 2026-12-09 | 28SS+20d | 217d | 0d |  |  |  |
| 30 | 1.2.3.1.3.5 | Lắp đặt chống lớp trên (Zone 2) | 15d | 2026-10-31 | 2026-11-14 | 24FS+7d | 0d |  |  |  |  |
| 31 | 1.2.3.1.3.6 | Đào đất đến lớp chống dưới | 20d | 2026-11-15 | 2026-12-04 | 30 | 765d | 0d |  |  |  |
| 32 | 1.2.3.1.3.7 | Lắp đặt chống lớp dưới (chống chéo) | 25d | 2026-11-15 | 2026-12-09 | 31SS | 765d | 0d |  |  |  |
| 33 | 1.2.3.1.3.8 | Đào đất đến đáy móng (Zone 2) | 45d | 2026-12-05 | 2027-01-18 | 32SS+20d | 765d |  |  |  |  |
| 34 | 1.2.3.1.4 | **CT02-THI CÔNG KẾT CẤU MÓNG VÀ B2** | 125d | 2026-11-25 | 2027-03-29 |  | 217d |  |  |  |  |
| 35 | 1.2.3.1.4.1 | CT02-1 Thi công móng | 30d | 2026-11-25 | 2026-12-24 | 29SS+30d | 217d | 0d |  |  |  |
| 36 | 1.2.3.1.4.2 | CT02-1 Đắp trả hố móng đến đỉnh sàn B2 | 10d | 2026-12-25 | 2027-01-03 | 35 | 257d | 0d |  |  |  |
| 37 | 1.2.3.1.4.3 | CT02-1 Thi công sàn B2 | 25d | 2027-01-04 | 2027-01-28 | 36 | 257d | 0d |  |  |  |
| 38 | 1.2.3.1.4.4 | CT02-2 Thi công móng | 30d | 2026-12-25 | 2027-01-23 | 35 | 217d | 0d |  |  |  |
| 39 | 1.2.3.1.4.5 | CT02-2 Đắp trả hố móng đến đỉnh sàn B2 | 10d | 2027-01-24 | 2027-02-02 | 38 | 259d | 0d |  |  |  |
| 40 | 1.2.3.1.4.6 | CT02-2 Thi công sàn B2 | 25d | 2027-02-03 | 2027-02-27 | 39 | 259d | 0d |  |  |  |
| 41 | 1.2.3.1.4.7 | CT02-3 Thi công móng | 30d | 2027-01-24 | 2027-02-22 | 38 | 217d | 0d |  |  |  |
| 42 | 1.2.3.1.4.8 | CT02-3 Đắp trả hố móng đến đỉnh sàn B2 | 10d | 2027-02-23 | 2027-03-04 | 41 | 217d | 0d |  |  |  |
| 43 | 1.2.3.1.4.9 | CT02-3 Thi công sàn B2 | 25d | 2027-03-05 | 2027-03-29 | 42 | 217d | 0d |  |  |  |
| 44 | 1.2.3.1.5 | **CT02 - THI CÔNG TƯỜNG HẦM 2 - ĐẮP TRẢ** | 129d | 2027-02-02 | 2027-06-10 |  | 224d |  | 464md | 1576h |  |
| 45 | 1.2.3.1.5.1 | CT02-1 Thi công tường bao, cột B2-B1 | 25d | 2027-02-02 | 2027-02-26 | 37FS+4d | 257d | 0d | 169m chu vi | 200h | 45md/đợt, mỗi đợt 6 ngày |
| 46 | 1.2.3.1.5.2 | CT02-1 Thi công sàn B1 (vành khăn) | 15d | 2027-02-27 | 2027-03-13 | 45 | 257d | 0d |  |  |  |
| 47 | 1.2.3.1.5.3 | CT02-1 Thi công chống thấm B2-B1 | 20d | 2027-02-26 | 2027-03-17 | 46FF+4d | 257d | 0d |  |  |  |
| 48 | 1.2.3.1.5.4 | CT02-1 đắp trả B2-B1, tháo chống | 25d | 2027-03-18 | 2027-04-11 | 47 | 257d | 0d |  |  |  |
| 49 | 1.2.3.1.5.5 | CT02-2 Thi công tường bao, cột B2-B1 | 18d | 2027-03-04 | 2027-03-21 | 40FS+4d | 259d | 0d | 124m chu vi | 144h |  |
| 50 | 1.2.3.1.5.6 | CT02-2 Thi công sàn B1 (vành khăn) | 22d | 2027-03-22 | 2027-04-12 | 49 | 259d | 0d |  |  |  |
| 51 | 1.2.3.1.5.7 | CT02-2 Thi công chống thấm B2-B1 | 20d | 2027-03-28 | 2027-04-16 | 50FF+4d | 259d | 0d |  |  |  |
| 52 | 1.2.3.1.5.8 | CT02-2 đắp trả B2-B1, tháo chống | 20d | 2027-04-17 | 2027-05-06 | 51 | 259d | 0d |  |  |  |
| 53 | 1.2.3.1.5.9 | CT02-3 Thi công tường bao, cột B2-B1 | 25d | 2027-04-03 | 2027-04-27 | 43FS+4d | 217d | 0d | 171m chu vi | 200h |  |
| 54 | 1.2.3.1.5.10 | CT02-3 Thi công sàn B1 (vành khăn) | 15d | 2027-04-28 | 2027-05-12 | 53 | 217d | 0d |  |  |  |
| 55 | 1.2.3.1.5.11 | CT02-3 Thi công chống thấm B2-B1 | 20d | 2027-04-27 | 2027-05-16 | 54FF+4d | 217d | 0d |  |  |  |
| 56 | 1.2.3.1.5.12 | CT02-3 đắp trả B2-B1, tháo chống | 25d | 2027-05-17 | 2027-06-10 | 55 | 217d | 0d |  |  |  |

| ID | WBS | Task | Duration | Start | Finish | Predecessors | Total slack | Free slack | Resources | Work | Text1 |
| --- | --- | --- | --- | --- | --- | --- | --- | --- | --- | --- | --- |
| 57 | 1.2.3.1.6 | **CT02 - THI CÔNG HẦM 1** | 146d | 2027-04-12 | 2027-09-04 |  | 257d |  |  |  |  |
| 58 | 1.2.3.1.6.1 | CT02-1 Thi công tường bao B1-G | 25d | 2027-04-12 | 2027-05-06 | 48 | 257d | 0d |  |  |  |
| 59 | 1.2.3.1.6.2 | CT02-1 Thi công sàn G | 25d | 2027-05-07 | 2027-05-31 | 58 | 257d | 0d |  |  |  |
| 60 | 1.2.3.1.6.3 | CT02-1 Thi công chống thấm B1-G | 15d | 2027-05-28 | 2027-06-11 | 58FS+21d | 600d | 0d |  |  |  |
| 61 | 1.2.3.1.6.4 | CT02-1 đắp trả B1-G, rút cừ | 21d | 2027-06-12 | 2027-07-02 | 60 | 600d |  |  |  |  |
| 62 | 1.2.3.1.6.5 | CT02-2 Thi công tường bao B1-G | 18d | 2027-05-07 | 2027-05-24 | 52 | 259d | 0d |  |  |  |
| 63 | 1.2.3.1.6.6 | CT02-2 Thi công sàn G | 25d | 2027-05-25 | 2027-06-18 | 62 | 259d | 0d |  |  |  |
| 64 | 1.2.3.1.6.7 | CT02-2 Thi công chống thấm B1-G | 15d | 2027-06-15 | 2027-06-29 | 62FS+21d | 578d | 0d |  |  |  |
| 65 | 1.2.3.1.6.8 | CT02-2 đắp trả B1-G, rút cừ | 25d | 2027-06-30 | 2027-07-24 | 64 | 578d |  |  |  |  |
| 66 | 1.2.3.1.6.9 | CT02-3 Thi công tường bao B1-G | 25d | 2027-06-11 | 2027-07-05 | 56 | 217d | 0d |  |  |  |
| 67 | 1.2.3.1.6.10 | CT02-3 Thi công sàn G | 25d | 2027-07-06 | 2027-07-30 | 66 | 217d | 0d |  |  |  |
| 68 | 1.2.3.1.6.11 | CT02-3 Thi công chống thấm B1-G | 15d | 2027-07-27 | 2027-08-10 | 66FS+21d | 536d | 0d |  |  |  |
| 69 | 1.2.3.1.6.12 | CT02-3 đắp trả B1-G, rút cừ | 25d | 2027-08-11 | 2027-09-04 | 68 | 536d |  |  |  |  |
| 70 | 1.2.3.2 | **CT02 - THI CÔNG PHẦN THÂN** | 295d | 2027-06-01 | 2028-03-26 |  | 217d |  |  | 5040h |  |
| 71 | 1.2.3.2.1 | **CT02 - THI CÔNG TẦNG 1** | 85d | 2027-06-01 | 2027-08-24 |  | 217d |  |  |  |  |
| 72 | 1.2.3.2.1.1 | CT02-1 Thi công sàn tầng 1 | 25d | 2027-06-01 | 2027-06-25 | 59 | 257d | 0d |  |  |  |
| 73 | 1.2.3.2.1.2 | CT02-2 Thi công sàn tầng 1 | 25d | 2027-06-19 | 2027-07-13 | 63 | 259d | 0d |  |  |  |
| 74 | 1.2.3.2.1.3 | CT02-3 Thi công sàn tầng 1 | 25d | 2027-07-31 | 2027-08-24 | 67 | 217d | 0d |  |  |  |
| 75 | 1.2.3.2.2 | **CT02 - THI CÔNG THÂN** | 270d | 2027-06-26 | 2028-03-26 |  | 217d |  |  | 5040h |  |
| 76 | 1.2.3.2.2.1 | CT02-1 Thi công tầng 2 đến tầng 21 (Mái) | 210d | 2027-06-26 | 2028-01-21 | 72 | 257d | 0d | 21 tầng | 1680h | 10 ngày/sàn |
| 77 | 1.2.3.2.2.2 | CT02-2 Thi công tầng 2 đến tầng 21 (Mái) | 210d | 2027-07-14 | 2028-02-08 | 73 | 259d | 0d | 21 tầng | 1680h | 10 ngày/sàn |
| 78 | 1.2.3.2.2.3 | CT02-3 Thi công tầng 2 đến tầng 21 (Mái) | 210d | 2027-08-25 | 2028-03-26 | 74 | 217d | 0d | 21 tầng | 1680h | 10 ngày/sàn |
| 79 | 1.2.3.3 | **CT02-THI CÔNG HOÀN THIỆN** | 330d | 2027-08-25 | 2028-07-24 |  | 217d |  |  |  |  |
| 80 | 1.2.3.3.1 | **Thi công hoàn thiện** | 330d | 2027-08-25 | 2028-07-24 |  | 217d |  |  |  | 3Vận thăng, xúc lật, xe nâng |
| 81 | 1.2.3.3.1.1 | CT02-1 hoàn thiện tầng 1 đến tầng 21 | 270d | 2027-08-25 | 2028-05-25 | 76SS+60d | 257d | 0d |  |  |  |
| 82 | 1.2.3.3.1.2 | CT02-2 hoàn thiện tầng 1 đến tầng 21 | 270d | 2027-09-12 | 2028-06-12 | 77SS+60d | 259d |  |  |  |  |
| 83 | 1.2.3.3.1.3 | CT02-3 hoàn thiện tầng 1 đến tầng 21 | 270d | 2027-10-24 | 2028-07-24 | 78SS+60d | 217d | 0d |  |  |  |
| 84 | 1.2.3.3.2 | Thi công cơ điện, PCCC… | 270d | 2027-09-14 | 2028-06-14 | 81SS+20d | 257d | 0d |  |  |  |
| 85 | 1.2.3.3.3 | Lắp đặt thiết bị | 270d | 2027-09-14 | 2028-06-14 | 84SS | 257d |  |  |  |  |

| ID | WBS | Task | Duration | Start | Finish | Predecessors | Total slack | Free slack | Resources | Work | Text1 |
| --- | --- | --- | --- | --- | --- | --- | --- | --- | --- | --- | --- |
| 86 | 1.2.3.4 | **CT02-HẠ TẦNG NGOÀI NHÀ, CẢNH QUAN** | 180d | 2028-01-22 | 2028-07-24 |  | 217d |  |  |  |  |
| 87 | 1.2.3.4.1 | Đường nội bộ | 180d | 2028-01-22 | 2028-07-24 | 83FF | 217d | 0d |  |  |  |
| 88 | 1.2.3.4.2 | Cảnh quan ngoài nhà | 180d | 2028-01-22 | 2028-07-24 | 87FF | 217d | 0d |  |  |  |
| 89 | 1.2.3.4.3 | Đấu nối hệ thống khác | 180d | 2028-01-22 | 2028-07-24 | 88FF | 217d |  |  |  |  |
| 90 | 1.3 | **C - TIẾN ĐỘ NOXH CT01** | 700d | 2026-08-25 | 2028-07-29 |  | 212d |  |  | 280h |  |
| 91 | 1.3.1 | San lấp tạo mặt bằng thi công | 20d | 2026-08-25 | 2026-09-13 | 19 | 237d | 0d |  |  | (đất từ tòa CT02-1) |
| 92 | 1.3.2 | **CT01-THI CÔNG PHẦN NGẦM** | 375d | 2026-09-14 | 2027-09-23 |  | 212d |  |  | 280h |  |
| 93 | 1.3.2.1 | **CT01 Thi công cọc khoan nhồi** | 40d | 2026-09-14 | 2026-10-23 |  | 212d |  |  |  |  |
| 94 | 1.3.2.1.1 | CT01 Thi công cọc khoan nhồi | 40d | 2026-09-14 | 2026-10-23 | 91 | 237d | 0d |  |  |  |
| 95 | 1.3.2.2 | **CT01 Thi công vòng vây và đào đất** | 90d | 2026-10-24 | 2027-01-21 |  | 212d |  |  |  |  |
| 96 | 1.3.2.2.1 | CT01 Đào hạ cốt | 20d | 2026-10-24 | 2026-11-12 | 94 | 212d | 0d |  |  | Lắp cẩu tháp |
| 97 | 1.3.2.2.2 | CT01 Đóng cừ larsen | 25d | 2026-11-13 | 2026-12-07 | 96 | 212d | 0d |  |  | Lắp cẩu tháp |
| 98 | 1.3.2.2.3 | CT01 Đào đất + lắp đặt chống | 45d | 2026-12-08 | 2027-01-21 | 97 | 212d | 0d |  |  |  |
| 99 | 1.3.2.3 | **CT01- Thi công BTCT** | 245d | 2027-01-22 | 2027-09-23 |  | 212d |  |  | 280h |  |
| 100 | 1.3.2.3.1 | CT01 Thi công móng | 30d | 2027-01-22 | 2027-02-20 | 98 | 212d | 0d |  |  |  |
| 101 | 1.3.2.3.2 | CT01 Lấp đất và tháo văng chống lớp 2 | 20d | 2027-02-21 | 2027-03-12 | 100 | 212d | 0d |  |  |  |
| 102 | 1.3.2.3.3 | CT01 Thi công Sàn B2 | 25d | 2027-03-13 | 2027-04-06 | 101 | 212d | 0d |  |  |  |
| 103 | 1.3.2.3.4 | CT01 Thi công tường bao B2-B1 | 35d | 2027-04-07 | 2027-05-11 | 102 | 212d | 0d | 232md | 280h |  |
| 104 | 1.3.2.3.5 | CT01 Thi công sàn B1 | 25d | 2027-05-12 | 2027-06-05 | 103 | 212d | 0d |  |  |  |
| 105 | 1.3.2.3.6 | CT01 Chống thấm mặt ngoài, lấp đất | 25d | 2027-06-06 | 2027-06-30 | 104 | 212d | 0d |  |  |  |
| 106 | 1.3.2.3.7 | CT01 Tháo văng chống lớp 1, rút cừ | 25d | 2027-07-01 | 2027-07-25 | 105 | 212d | 0d |  |  |  |
| 107 | 1.3.2.3.8 | CT01 Thi công tường bao B1-G | 35d | 2027-07-26 | 2027-08-29 | 106 | 212d | 0d |  |  |  |
| 108 | 1.3.2.3.9 | CT01 Thi công sàn G | 25d | 2027-08-30 | 2027-09-23 | 107 | 212d | 0d |  |  |  |
| 109 | 1.3.3 | **CT01 THI CÔNG THÂN + HOÀN THIỆN** | 305d | 2027-09-24 | 2028-07-29 |  | 212d |  |  |  |  |
| 110 | 1.3.3.1 | CT01 Thi công sàn G (tầng 1) | 25d | 2027-09-24 | 2027-10-18 | 108 | 212d | 0d |  |  |  |
| 111 | 1.3.3.2 | CT01 Thi công tầng 1 đến tầng 21 (Roof) | 160d | 2027-10-19 | 2028-03-31 | 110 | 212d | 0d |  |  |  |
| 112 | 1.3.3.3 | CT01 hoàn thiện tầng 1 đến tầng 21 | 270d | 2027-10-29 | 2028-07-29 | 111SS+10d | 212d | 0d |  |  |  |
| 113 | 1.3.3.4 | Thi công cơ điện, PCCC… | 270d | 2027-10-29 | 2028-07-29 | 112FF | 212d | 0d |  |  |  |
| 114 | 1.3.3.5 | Lắp đặt thiết bị | 270d | 2027-10-29 | 2028-07-29 | 113FF | 212d |  |  |  |  |

| ID | WBS | Task | Duration | Start | Finish | Predecessors | Total slack |
| --- | --- | --- | --- | --- | --- | --- | --- |
| 115 | 1.3.4 | **CT01-HẠ TẦNG NGOÀI NHÀ, CẢNH QUAN** | 120d | 2028-04-01 | 2028-07-29 |  | 212d |
| 116 | 1.3.4.1 | Đường nội bộ | 120d | 2028-04-01 | 2028-07-29 | 112FF | 212d |
| 117 | 1.3.4.2 | Cảnh quan ngoài nhà | 120d | 2028-04-01 | 2028-07-29 | 112FF | 212d |
| 118 | 1.3.4.3 | Đấu nối hệ thống khác | 120d | 2028-04-01 | 2028-07-29 | 112FF | 212d |
| 119 | 1.4 | **D - TIẾN ĐỘ NHÀ N01** | 830d | 2026-11-15 | 2029-02-26 |  | 0d |
| 120 | 1.4.1 | N01 San lấp tạo mặt bằng thi công | 15d | 2026-11-15 | 2026-11-29 | 30 | 0d |
| 121 | 1.4.2 | **N01 Thi công cọc khoan nhồi và tường vây** | 135d | 2026-11-30 | 2027-04-13 |  | 0d |
| 122 | 1.4.2.1 | N01 Thi công cọc khoan nhồi | 55d | 2026-11-30 | 2027-01-23 | 120 | 0d |
| 123 | 1.4.2.2 | N01 Thi công tường vây | 80d | 2027-01-24 | 2027-04-13 | 122 | 0d |
| 124 | 1.4.3 | **N01-THI CÔNG KẾT CẤU Semi TOP-DOWN** | 620d | 2027-04-14 | 2028-12-28 |  | 0d |
| 125 | 1.4.3.1 | Thi công sàn tầng G | 20d | 2027-04-14 | 2027-05-03 | 123 | 0d |
| 126 | 1.4.3.2 | Đào đất B1-G | 25d | 2027-05-04 | 2027-05-28 | 125 | 0d |
| 127 | 1.4.3.3 | N01 Thi công sàn B1 | 35d | 2027-05-29 | 2027-07-02 | 126 | 0d |
| 128 | 1.4.3.4 | Đào đất B2-B1 | 25d | 2027-07-03 | 2027-07-27 | 127 | 0d |
| 129 | 1.4.3.5 | N01 Thi công sàn B2 | 35d | 2027-07-28 | 2027-08-31 | 128 | 0d |
| 130 | 1.4.3.6 | Đào đất B3-B2 | 25d | 2027-09-01 | 2027-09-25 | 129 | 0d |
| 131 | 1.4.3.7 | N01 Thi công sàn B3 | 35d | 2027-09-26 | 2027-10-30 | 130 | 0d |
| 132 | 1.4.3.8 | Đào đất B4-B3 | 25d | 2027-10-31 | 2027-11-24 | 131 | 0d |
| 133 | 1.4.3.9 | Thi công móng | 45d | 2027-11-25 | 2028-01-08 | 132 | 0d |
| 134 | 1.4.3.10 | Thi công thân tầng 1 đến tầng 35 (Mái) | 350d | 2028-01-09 | 2028-12-28 | 133 | 0d |
| 135 | 1.4.4 | **N01 Thi công hoàn thiện** | 350d | 2028-03-14 | 2029-02-26 |  | 0d |
| 136 | 1.4.4.1 | CT01 hoàn thiện tầng 1 đến tầng 21 | 350d | 2028-03-14 | 2029-02-26 | 134SS+60d | 0d |
| 137 | 1.4.4.2 | Thi công cơ điện, PCCC… | 350d | 2028-03-14 | 2029-02-26 | 136FF | 0d |
| 138 | 1.4.4.3 | Lắp đặt thiết bị | 350d | 2028-03-14 | 2029-02-26 | 137FF | 0d |

| ID | WBS | Task | Duration | Start | Finish | Predecessors | Total slack |
| --- | --- | --- | --- | --- | --- | --- | --- |
| 139 | 1.4.5 | **N01-HẠ TẦNG NGOÀI NHÀ, CẢNH QUAN** | 150d | 2028-08-01 | 2028-12-28 |  | 60d |
| 140 | 1.4.5.1 | Đường nội bộ | 150d | 2028-08-01 | 2028-12-28 | 134FF | 60d |
| 141 | 1.4.5.2 | Cảnh quan ngoài nhà | 150d | 2028-08-01 | 2028-12-28 | 134FF | 60d |
| 142 | 1.4.5.3 | Đấu nối hệ thống khác | 150d | 2028-08-01 | 2028-12-28 | 134FF | 60d |
