# F:\Viet Tuan\VINACONEXEC\DAU THAU\B. CÁC DỰ ÁN KHÁC\85. Long Son Pakage G-Hyundai\Prepairation\Construction Schedule-Package G-Huynhdai

Schedule from MS Project, 2026-02-28 to 2028-11-26.

## Calendars

- Standard: Mon-Sun 08:00-12:00, 13:00-17:00. Exceptions (off unless hours are given): 2027-02-05 to 2027-02-11 08:00-12:00, 13:00-17:00 (Tết âm lịch 2027), 2028-02-13 to 2028-02-17 (Tết âm lịch 2028).

## Resources

| Resource |
| --- |
| 137 cọc |
| 233m chu vi |
| 21 tầng |
| 1 |
| 1 cọc |
| 1 cọc D1 |
| 5; 1 cọc D1 |
| 2 |
| 48 cọc D1 |
| 5; 25 cọc D1 |
| 5 25cọc D1 |
| 169m chu vi |
| 114m chu vi |
| 171m chu vi |

## Schedule

| ID | WBS | Task | Duration | Start | Finish | Predecessors | Total slack | Free slack | Constraint | Resources | Work |
| --- | --- | --- | --- | --- | --- | --- | --- | --- | --- | --- | --- |
| 1 | 1 | **TỔNG TIẾN ĐỘ** | 998d | 2026-02-28 | 2028-11-26 |  | 0d |  |  |  | 1560h |
| 2 | 1.1 | **A. CÔNG TÁC CHUẨN BỊ** | 45d | 2026-02-28 | 2026-04-13 |  | 953d |  |  |  |  |
| 3 | 1.1.1 | Huy động vật tư và thiết bị | 45d | 2026-02-28 | 2026-04-13 |  | 953d | 0d | start no earlier than 2026-02-28 |  |  |
| 4 | 1.1.2 | Văn phòng và tiện ích tạm | 45d | 2026-02-28 | 2026-04-13 | 3SS | 953d |  |  |  |  |
| 5 | 1.2 | **B. TIẾN ĐỘ 3 TÒA NOXH (CT02-1, 2, 3)** | 749d | 2026-02-28 | 2028-03-22 |  | 0d |  |  |  | 1560h |
| 6 | 1.2.1 | THIẾT LẬP HÀNG RÀO, CỔNG DỰ ÁN | 15d | 2026-02-28 | 2026-03-14 |  | 0d |  | start no earlier than 2026-02-28 |  |  |
| 7 | 1.2.2 | **SAN LẤP MẶT BẰNG (tạo mặt bằng T/C)** | 50d | 2026-03-07 | 2026-04-25 |  | 0d |  |  |  |  |
| 8 | 1.2.2.1 | SAN LẤP MẶT BẰNG TÒA CT02-1 | 5d | 2026-03-07 | 2026-03-11 | 6SS+7d | 0d |  |  |  |  |
| 9 | 1.2.2.2 | SAN LẤP MẶT BẰNG TÒA CT02-2 | 45d | 2026-03-12 | 2026-04-25 | 8 | 249d | 0d |  |  |  |
| 10 | 1.2.2.3 | SAN LẤP MẶT BẰNG TÒA CT02-3 | 45d | 2026-03-12 | 2026-04-25 | 9SS | 941d |  |  |  |  |
| 11 | 1.2.3 | **NHÀ CT2** | 737d | 2026-03-12 | 2028-03-22 |  | 0d |  |  |  | 1560h |
| 12 | 1.2.3.1 | **CT02 THI CÔNG CỌC VÀ KHUNG VÂY** | 168d | 2026-03-12 | 2026-08-26 |  | 0d |  |  |  | 240h |
| 13 | 1.2.3.1.1 | **CT02-1 Thi công cọc khoan nhồi** | 125d | 2026-03-12 | 2026-07-14 |  | 0d |  |  |  | 240h |
| 14 | 1.2.3.1.1.1 | Thi công cọc khoan nhồi: CỌC THỬ | 10d | 2026-03-12 | 2026-03-21 | 8 | 0d |  |  | 1 cọc D1; 5; 1 cọc D1; 2 | 240h |
| 15 | 1.2.3.1.1.2 | Thi công cọc khoan nhồi: CỌC ĐẠI TRÀ | 50d | 2026-03-22 | 2026-05-10 | 14 | 0d |  |  |  |  |
| 16 | 1.2.3.1.1.3 | CT02-2 Thi công cọc khoan nhồi (đại trà) | 65d | 2026-04-26 | 2026-06-29 | 9, 14 | 249d | 0d |  |  |  |
| 17 | 1.2.3.1.1.4 | CT02-3 Thi công cọc khoan nhồi (đại trà) | 60d | 2026-05-16 | 2026-07-14 | 16SS+20d | 249d | 0d |  |  |  |
| 18 | 1.2.3.1.2 | **Thi công hệ khung vây và đào đất** | 115d | 2026-05-04 | 2026-08-26 |  | 0d |  |  |  |  |
| 19 | 1.2.3.1.2.1 | Đóng cọc larsen khu vực 1 | 17d | 2026-05-04 | 2026-05-20 | 15FF+10d | 0d |  |  |  |  |
| 20 | 1.2.3.1.2.2 | Đào đất + lắp đặt chống khu vực 1 | 25d | 2026-05-21 | 2026-06-14 | 19 | 0d |  |  |  |  |
| 21 | 1.2.3.1.2.3 | Đóng cọc larsen khu vực 2 | 12d | 2026-06-30 | 2026-07-11 | 16 | 394d | 0d |  |  |  |
| 22 | 1.2.3.1.2.4 | Đào đất + lắp đặt chống khu vực 2 | 20d | 2026-07-12 | 2026-07-31 | 21 | 394d | 0d |  |  |  |
| 23 | 1.2.3.1.2.5 | Đóng cọc larsen khu vực 3 | 18d | 2026-07-15 | 2026-08-01 | 17 | 249d | 0d |  |  |  |
| 24 | 1.2.3.1.2.6 | Đào đất + lắp đặt chống khu vực 3 | 25d | 2026-08-02 | 2026-08-26 | 23 | 249d | 0d |  |  |  |

Notes:
- 14: Text1: cọc nghỉ 7 ngày, 4 ngày thí nghiệm; 2 ngày chuyển cục tải; 2 ngày thí nghiệm PDA
- 15: Text1: 48 cọc D1,5; 25 cọc D1,2
- 16: Text1: 49 cọc D1,5; 33 cọc D1,2
- 17: Text1: 33 cọc D1,5; 49 cọc D1,2
- 19: Text1: 169m, mỗi ngày làm 10m
- 21: Text1: 116m, mỗi ngày làm 10m
- 23: Text1: 181m, mỗi ngày làm 10m

| ID | WBS | Task | Duration | Start | Finish | Predecessors | Total slack | Free slack | Resources | Work | Text1 |
| --- | --- | --- | --- | --- | --- | --- | --- | --- | --- | --- | --- |
| 25 | 1.2.3.2 | **CT02-THI CÔNG KẾT CẤU MÓNG** | 118d | 2026-06-15 | 2026-10-10 |  | 322d |  |  |  |  |
| 26 | 1.2.3.2.1 | CT02-1 Thi công móng | 45d | 2026-06-15 | 2026-07-29 | 20 | 432d | 0d |  |  |  |
| 27 | 1.2.3.2.2 | CT02-2 Thi công móng | 45d | 2026-08-01 | 2026-09-14 | 22 | 394d | 0d |  |  |  |
| 28 | 1.2.3.2.3 | CT02-3 Thi công móng | 45d | 2026-08-27 | 2026-10-10 | 24 | 249d | 0d |  |  |  |
| 29 | 1.2.3.3 | **CT02 - THI CÔNG HẦM B2** | 100d | 2026-07-30 | 2026-11-06 |  | 322d |  | 233m chu vi | 1120h |  |
| 30 | 1.2.3.3.1 | CT02-1 Thi công tường bao B2-B1 | 14d | 2026-07-30 | 2026-08-12 | 26 | 432d | 0d | 169m chu vi | 112h | Mỗi ngày làm 12m |
| 31 | 1.2.3.3.2 | CT02-1 Thi công sàn B1 | 15d | 2026-08-13 | 2026-08-27 | 30 | 432d | 0d |  |  |  |
| 32 | 1.2.3.3.3 | CT02-2 Thi công tường bao B2-B1 | 11d | 2026-09-15 | 2026-09-25 | 27 | 394d | 0d | 114m chu vi | 88h | Mỗi ngày làm 12m |
| 33 | 1.2.3.3.4 | CT02-2 Thi công sàn B1 | 12d | 2026-09-26 | 2026-10-07 | 32 | 394d | 0d |  |  |  |
| 34 | 1.2.3.3.5 | CT02-3 Thi công tường bao B2-B1 | 15d | 2026-10-11 | 2026-10-25 | 28 | 249d | 0d | 171m chu vi | 120h | Mỗi ngày làm 12m |
| 35 | 1.2.3.3.6 | CT02-3 Thi công sàn B1 | 12d | 2026-10-26 | 2026-11-06 | 34 | 249d | 0d |  |  |  |
| 36 | 1.2.3.4 | **CT02 - THI CÔNG HẦM B1** | 93d | 2026-08-28 | 2026-11-28 |  | 320d |  |  |  |  |
| 37 | 1.2.3.4.1 | CT02-1 Thi công tường bao B1-G | 15d | 2026-08-28 | 2026-09-11 | 31 | 432d | 0d |  |  |  |
| 38 | 1.2.3.4.2 | CT02-1 Thi công sàn G | 15d | 2026-09-12 | 2026-09-26 | 37 | 432d | 0d |  |  |  |
| 39 | 1.2.3.4.3 | CT02-2 Thi công tường bao B1-G | 15d | 2026-10-08 | 2026-10-22 | 33 | 394d | 0d |  |  |  |
| 40 | 1.2.3.4.4 | CT02-2 Thi công sàn G | 12d | 2026-10-23 | 2026-11-03 | 39 | 394d | 0d |  |  |  |
| 41 | 1.2.3.4.5 | CT02-3 Thi công tường bao B1-G | 10d | 2026-11-07 | 2026-11-16 | 35 | 249d | 0d |  |  |  |
| 42 | 1.2.3.4.6 | CT02-3 Thi công sàn G | 12d | 2026-11-17 | 2026-11-28 | 41 | 249d | 0d |  |  |  |
| 43 | 1.2.3.5 | **CT02 - THI CÔNG TẦNG G** | 88d | 2026-09-27 | 2026-12-23 |  | 312d |  |  | 200h |  |
| 44 | 1.2.3.5.1 | CT02-1 Thi công sàn G (tầng 1) | 25d | 2026-09-27 | 2026-10-21 | 38 | 432d | 0d |  |  |  |
| 45 | 1.2.3.5.2 | CT02-2 Thi công sàn G (tầng 1) | 25d | 2026-11-04 | 2026-11-28 | 40 | 394d | 0d |  |  |  |
| 46 | 1.2.3.5.3 | CT02-3 Thi công sàn G (tầng 1) | 25d | 2026-11-29 | 2026-12-23 | 42 | 249d | 0d | 21 tầng | 200h | 10 ngày/sàn |
| 47 | 1.2.3.6 | **CT02 - THI CÔNG THÂN** | 273d | 2026-10-22 | 2027-07-21 |  | 312d |  |  |  |  |
| 48 | 1.2.3.6.1 | CT02-1 Thi công tầng 1 đến tầng 21 | 210d | 2026-10-22 | 2027-05-19 | 44 | 432d | 0d |  |  |  |
| 49 | 1.2.3.6.2 | CT02-2 Thi công tầng 1 đến tầng 21 | 210d | 2026-11-29 | 2027-06-26 | 45 | 394d | 0d |  |  |  |
| 50 | 1.2.3.6.3 | CT02-3 Thi công tầng 1 đến tầng 21 | 210d | 2026-12-24 | 2027-07-21 | 46 | 249d | 0d |  |  |  |

| ID | WBS | Task | Duration | Start | Finish | Predecessors | Total slack | Free slack | Text1 |
| --- | --- | --- | --- | --- | --- | --- | --- | --- | --- |
| 51 | 1.2.3.7 | **CT02-THI CÔNG HOÀN THIỆN** | 453d | 2026-12-21 | 2028-03-22 |  | 249d |  |  |
| 52 | 1.2.3.7.1 | **Thi công hoàn thiện** | 333d | 2026-12-21 | 2027-11-18 |  | 312d |  | 2Vận thăng, xúc lật, xe nâng |
| 53 | 1.2.3.7.1.1 | CT02-1 hoàn thiện tầng 1 đến tầng 21 | 270d | 2026-12-21 | 2027-09-16 | 48SS+60d | 432d |  |  |
| 54 | 1.2.3.7.1.2 | CT02-2 hoàn thiện tầng 1 đến tầng 21 | 270d | 2027-01-28 | 2027-10-24 | 49SS+60d | 394d |  |  |
| 55 | 1.2.3.7.1.3 | CT02-3 hoàn thiện tầng 1 đến tầng 21 | 270d | 2027-02-22 | 2027-11-18 | 50SS+60d | 249d | 0d |  |
| 56 | 1.2.3.7.2 | Thi công cơ điện, PCCC… | 270d | 2027-04-23 | 2028-01-17 | 55SS+60d | 249d | 0d | 2Vận thăng |
| 57 | 1.2.3.7.3 | Lắp đặt thiết bị | 270d | 2027-06-22 | 2028-03-22 | 56SS+60d | 249d | 0d | 2Vận thăng |
| 58 | 1.2.3.8 | **CT02-HẠ TẦNG NGOÀI NHÀ, CẢNH QUAN** | 120d | 2027-11-19 | 2028-03-22 |  | 249d |  |  |
| 59 | 1.2.3.8.1 | Đường nội bộ | 120d | 2027-11-19 | 2028-03-22 | 57FF | 249d | 0d |  |
| 60 | 1.2.3.8.2 | Cảnh quan ngoài nhà | 120d | 2027-11-19 | 2028-03-22 | 59FF | 249d | 0d |  |
| 61 | 1.2.3.8.3 | Đấu nối hệ thống khác | 120d | 2027-11-19 | 2028-03-22 | 60FF | 249d |  |  |
| 62 | 1.3 | **C - TIẾN ĐỘ NOXH CT01** | 717d | 2026-05-23 | 2028-05-13 |  | 0d |  |  |
| 63 | 1.3.1 | San lấp tạo mặt bằng thi công | 30d | 2026-05-23 | 2026-06-21 | 20FF+7d | 0d |  | (đất từ tòa Ct01-2) |
| 64 | 1.3.2 | **CT01 Thi công cọc khoan nhồi** | 65d | 2026-06-22 | 2026-08-25 |  | 197d |  |  |
| 65 | 1.3.2.1 | CT01 Thi công cọc khoan nhồi | 65d | 2026-06-22 | 2026-08-25 | 63 | 197d | 0d |  |
| 66 | 1.3.3 | **CT01 Thi công vòng vây và đào đất** | 80d | 2026-08-26 | 2026-11-13 |  | 197d |  |  |
| 67 | 1.3.3.1 | CT01 Đóng cọc larsen | 35d | 2026-08-26 | 2026-09-29 | 65 | 197d | 0d |  |
| 68 | 1.3.3.2 | CT01 Đào đất + lắp đặt chống | 45d | 2026-09-30 | 2026-11-13 | 67 | 197d | 0d |  |
| 69 | 1.3.4 | **CT01-THI CÔNG KẾT CẤU** | 360d | 2026-11-16 | 2027-11-10 |  | 197d |  |  |
| 70 | 1.3.4.1 | CT01 Thi công móng | 45d | 2026-11-16 | 2026-12-30 | 68FS+2d | 197d | 0d |  |
| 71 | 1.3.4.2 | CT01 Thi công tường bao B2-B1 | 22d | 2026-12-31 | 2027-01-21 | 70 | 197d | 0d |  |
| 72 | 1.3.4.3 | CT01 Thi công sàn B1 | 18d | 2027-01-22 | 2027-02-08 | 71 | 197d | 0d |  |
| 73 | 1.3.4.4 | CT01 Thi công tường bao B1-G | 22d | 2027-02-09 | 2027-03-02 | 72 | 197d | 0d |  |
| 74 | 1.3.4.5 | CT01 Thi công sàn G | 18d | 2027-03-03 | 2027-03-20 | 73 | 197d | 0d |  |
| 75 | 1.3.4.6 | CT01 Thi công sàn G (tầng 1) | 25d | 2027-03-21 | 2027-04-14 | 74 | 197d | 0d |  |
| 76 | 1.3.4.7 | CT01 Thi công tầng 1 đến tầng 21 (Roof) | 210d | 2027-04-15 | 2027-11-10 | 75 | 197d | 0d |  |

| ID | WBS | Task | Duration | Start | Finish | Predecessors | Total slack | Free slack |
| --- | --- | --- | --- | --- | --- | --- | --- | --- |
| 77 | 1.3.5 | **CT01 Thi công hoàn thiện** | 330d | 2027-06-14 | 2028-05-13 |  | 197d |  |
| 78 | 1.3.5.1 | CT01 hoàn thiện tầng 1 đến tầng 21 | 270d | 2027-06-14 | 2028-03-14 | 76SS+60d | 197d | 0d |
| 79 | 1.3.5.2 | Thi công cơ điện, PCCC… | 270d | 2027-08-13 | 2028-05-13 | 78SS+60d | 197d | 0d |
| 80 | 1.3.5.3 | Lắp đặt thiết bị | 270d | 2027-08-13 | 2028-05-13 | 79SS | 197d |  |
| 81 | 1.3.6 | **CT01-HẠ TẦNG NGOÀI NHÀ, CẢNH QUAN** | 120d | 2027-11-19 | 2028-03-22 |  | 249d |  |
| 82 | 1.3.6.1 | Đường nội bộ | 120d | 2027-11-19 | 2028-03-22 | 59FF | 249d | 0d |
| 83 | 1.3.6.2 | Cảnh quan ngoài nhà | 120d | 2027-11-19 | 2028-03-22 | 82FF | 249d | 0d |
| 84 | 1.3.6.3 | Đấu nối hệ thống khác | 120d | 2027-11-19 | 2028-03-22 | 83FF | 249d |  |
| 85 | 1.4 | **D - TIẾN ĐỘ NHÀ N01** | 904d | 2026-06-02 | 2028-11-26 |  | 0d |  |
| 86 | 1.4.1 | N01 San lấp tạo mặt bằng thi công | 20d | 2026-06-02 | 2026-06-21 | 63FF | 0d |  |
| 87 | 1.4.2 | **N01 Thi công cọc khoan nhồi và tường vây** | 135d | 2026-06-22 | 2026-11-03 |  | 0d |  |
| 88 | 1.4.2.1 | N01 Thi công cọc khoan nhồi | 55d | 2026-06-22 | 2026-08-15 | 86 | 0d |  |
| 89 | 1.4.2.2 | N01 Thi công tường vây | 80d | 2026-08-16 | 2026-11-03 | 88 | 0d |  |
| 90 | 1.4.3 | **N01-THI CÔNG KẾT CẤU Semi TOP-DOWN** | 620d | 2026-11-08 | 2028-07-24 |  | 0d |  |
| 91 | 1.4.3.1 | Thi công sàn tầng G | 20d | 2026-11-08 | 2026-11-27 | 89FS+4d | 0d |  |
| 92 | 1.4.3.2 | Đào đất B1-G | 25d | 2026-11-28 | 2026-12-22 | 91 | 0d |  |
| 93 | 1.4.3.3 | N01 Thi công sàn B1 | 35d | 2026-12-23 | 2027-01-26 | 92 | 0d |  |
| 94 | 1.4.3.4 | Đào đất B2-B1 | 25d | 2027-01-27 | 2027-02-20 | 93 | 0d |  |
| 95 | 1.4.3.5 | N01 Thi công sàn B2 | 35d | 2027-02-21 | 2027-03-27 | 94 | 0d |  |
| 96 | 1.4.3.6 | Đào đất B3-B2 | 25d | 2027-03-28 | 2027-04-21 | 95 | 0d |  |
| 97 | 1.4.3.7 | N01 Thi công sàn B3 | 35d | 2027-04-22 | 2027-05-26 | 96 | 0d |  |
| 98 | 1.4.3.8 | Đào đất B4-B3 | 25d | 2027-05-27 | 2027-06-20 | 97 | 0d |  |
| 99 | 1.4.3.9 | Thi công móng | 45d | 2027-06-21 | 2027-08-04 | 98 | 0d |  |
| 100 | 1.4.3.10 | Thi công thân tầng 1 đến tầng 35 (Mái) | 350d | 2027-08-05 | 2028-07-24 | 99 | 0d |  |

| ID | WBS | Task | Duration | Start | Finish | Predecessors | Total slack |
| --- | --- | --- | --- | --- | --- | --- | --- |
| 101 | 1.4.4 | **N01 Thi công hoàn thiện** | 380d | 2027-10-04 | 2028-10-22 |  | 0d |
| 102 | 1.4.4.1 | CT01 hoàn thiện tầng 1 đến tầng 21 | 350d | 2027-10-04 | 2028-09-22 | 100SS+60d | 0d |
| 103 | 1.4.4.2 | Thi công cơ điện, PCCC… | 350d | 2027-11-03 | 2028-10-22 | 102FF+30d | 0d |
| 104 | 1.4.4.3 | Lắp đặt thiết bị | 350d | 2027-11-03 | 2028-10-22 | 103FF | 0d |
| 105 | 1.4.5 | **N01-HẠ TẦNG NGOÀI NHÀ, CẢNH QUAN** | 100d | 2028-08-19 | 2028-11-26 |  | 0d |
| 106 | 1.4.5.1 | Đường nội bộ | 100d | 2028-08-19 | 2028-11-26 | 104FF+35d | 0d |
| 107 | 1.4.5.2 | Cảnh quan ngoài nhà | 100d | 2028-08-19 | 2028-11-26 | 106FF | 0d |
| 108 | 1.4.5.3 | Đấu nối hệ thống khác | 100d | 2028-08-19 | 2028-11-26 | 107FF | 0d |
